# Midterm #2v2

How a schedule from MS Project changed from version to version. A marks actual dates.

## Version 1 (saved 2023-03-23, file Midterm #2v2.mpp)

Note of the change: updating from my other computer

| ID | WBS | Task | Duration | Start | Finish | Predecessors | Complete | Total float | Constraint |
| --- | --- | --- | --- | --- | --- | --- | --- | --- | --- |
| 1 | 1 | **IoT Projects for cohort #9** | 12.12d | 2023-03-06 08:00 A | 2023-03-22 09:00 |  | 80% | 0d |  |
| 2 | 1.1 | **Midterm Project #1** | 3.44d | 2023-03-06 08:00 A | 2023-03-09 11:30 A |  | 100% |  |  |
| 3 | 1.1.1 | **Plan the project** | 0.56d | 2023-03-06 08:00 A | 2023-03-06 13:30 A |  | 100% |  |  |
| 4 |  | write up the details | 4h | 2023-03-06 08:00 A | 2023-03-06 12:00 A |  | 100% |  |  |
| 5 |  | photo/video progress | 0.5h | 2023-03-06 13:00 A | 2023-03-06 13:30 A | 4 | 100% |  |  |
| 6 | 1.1.2 | **Draw the schematic** | 0.56d | 2023-03-06 13:30 A | 2023-03-07 09:00 A | 3 | 100% |  |  |
| 7 |  | pencil in the schematic in notebook or paper | 4h | 2023-03-06 13:30 A | 2023-03-07 08:30 A |  | 100% |  |  |
| 8 |  | photo/video progress | 0.5h | 2023-03-07 08:30 A | 2023-03-07 09:00 A | 7 | 100% |  |  |
| 9 | 1.1.3 | **set up new computer** | 0.38d | 2023-03-07 09:00 A | 2023-03-07 12:00 A | 3 | 100% |  |  |
| 10 |  | load software | 3h | 2023-03-07 09:00 A | 2023-03-07 12:00 A | 8 | 100% |  |  |
| 11 | 1.1.4 | **Fritz** | 0.12d | 2023-03-07 13:00 A | 2023-03-07 14:00 A |  | 100% |  |  |
| 12 |  | photo/video progress | 0.5h | 2023-03-07 13:00 A | 2023-03-07 13:30 A | 10 | 100% |  |  |
| 13 |  | draw wiring using Fritz | 0.5h | 2023-03-07 13:30 A | 2023-03-07 14:00 A | 12 | 100% |  |  |
| 14 | 1.1.5 | **Code** | 2.31d | 2023-03-07 09:00 A | 2023-03-09 11:30 A | 3 | 100% |  |  |
| 15 |  | photo/video progress | 0.5h | 2023-03-07 14:00 A | 2023-03-07 14:30 A | 13 | 100% |  |  |
| 16 |  | find code for (new and old) units | 2h | 2023-03-07 09:00 A | 2023-03-08 11:00 A |  | 100% |  |  |
| 17 |  | Auto and Manual - user controls lights and outlet | 1h | 2023-03-09 10:30 A | 2023-03-09 11:30 A | 16, 13 | 100% |  |  |
| 18 |  | modify code for my use | 1h | 2023-03-07 09:30 A | 2023-03-07 10:30 A | 15 | 100% |  |  |
| 19 |  | control 2 WEMO outlets | 1h | 2023-03-08 08:00 A | 2023-03-08 09:00 A | 16 | 100% |  |  |
| 20 |  | update code to control 2 WEMO outlets | 1h | 2023-03-08 08:00 A | 2023-03-08 09:00 A | 19 | 100% |  |  |
| 21 |  | control Hue lights | 1h | 2023-03-08 08:00 A | 2023-03-08 09:00 A | 20 | 100% |  |  |
| 22 |  | update codefor hue lights | 1h | 2023-03-08 08:00 A | 2023-03-08 09:15 A | 21 | 100% |  |  |
| 23 | 1.1.6 | **build the Welcome Box** | 2.56d | 2023-03-06 13:30 A | 2023-03-09 09:00 A | 3 | 100% |  |  |
| 24 |  | 3D design and print at least one part (button cover, knob, logo, etc.) | 1h | 2023-03-09 08:00 A | 2023-03-09 09:00 A | 22 | 100% |  | start no earlier than 2023-03-09 08:00 |
| 25 |  | A component made at FUSE - laser, wood, metal (case, stand, etc.) | 1h | 2023-03-09 08:00 A | 2023-03-09 09:00 A | 24 | 100% |  | start no earlier than 2023-03-09 08:00 |
| 26 |  | photo/video progress | 0.5h | 2023-03-06 13:30 A | 2023-03-06 14:00 A | 25 | 100% |  |  |
| 28 | 1.2 | **Midterm #2v1** | 2.38d | 2023-03-17 08:00 A | 2023-03-21 11:00 A | 26 | 100% |  | start no earlier than 2023-03-17 08:00 |
| 29 | 1.2.1 | **Plan the project** | 0.5d | 2023-03-17 08:00 A | 2023-03-17 12:00 A |  | 100% |  |  |
| 30 |  | write up the details | 4h | 2023-03-17 08:00 A | 2023-03-17 12:00 A |  | 100% |  | start no earlier than 2023-03-17 08:00 |
| 31 |  | photo/video progress | 0.5h | 2023-03-17 08:00 A | 2023-03-17 08:30 A |  | 100% |  |  |
| 32 | 1.2.2 | **Fritz** | 0.12d | 2023-03-17 08:00 A | 2023-03-17 09:00 A |  | 100% |  |  |
| 33 |  | photo/video progress | 1h | 2023-03-17 08:00 A | 2023-03-17 09:00 A |  | 100% |  |  |
| 34 |  | draw wiring using Fritz | 1h | 2023-03-17 08:00 A | 2023-03-17 09:00 A |  | 100% |  |  |
| 35 | 1.2.3 | **Code** | 0.5d | 2023-03-17 13:00 A | 2023-03-17 17:00 A | 29 | 100% |  |  |
| 36 |  | photo/video progress | 0.5h | 2023-03-17 13:00 A | 2023-03-17 13:30 A |  | 100% |  |  |
| 37 |  | find code for (new and old) units | 2h | 2023-03-17 13:00 A | 2023-03-17 15:00 A |  | 100% |  |  |
| 38 |  | Integrate the entire system | 1h | 2023-03-17 13:00 A | 2023-03-17 14:00 A |  | 100% |  |  |
| 39 |  | Create a user friendly Adafruit.io dashboard | 1h | 2023-03-17 13:00 A | 2023-03-17 14:00 A |  | 100% |  |  |
| 40 |  | Buy and/or create a structure to hold the plant, pump, and sensors. | 0.5h | 2023-03-17 13:00 A | 2023-03-17 13:30 A |  | 100% |  |  |
| 41 |  | Integration of SMS/email messaging using Zapier (following slides). | 4h | 2023-03-17 13:00 A | 2023-03-17 17:00 A |  | 100% |  |  |
| 42 |  | Video demo your Plant Watering System | 3h | 2023-03-17 13:00 A | 2023-03-17 16:00 A |  | 100% |  |  |
| 43 |  | update code for watering system | 4h | 2023-03-17 13:00 A | 2023-03-17 17:00 A |  | 100% |  |  |
| 44 | 1.2.4 | **build the Fijian Plant H2O system** | 0.38d | 2023-03-21 08:00 A | 2023-03-21 11:00 A | 43 | 100% |  | start no earlier than 2023-03-21 08:00 |
| 45 |  | place all components in bowl | 2h | 2023-03-21 08:00 A | 2023-03-21 10:00 A |  | 100% |  |  |
| 46 |  | check for plant system operation within bowl | 3h | 2023-03-21 08:00 A | 2023-03-21 11:00 A |  | 100% |  |  |
| 47 |  | photo/video progress | 3h | 2023-03-21 08:00 A | 2023-03-21 11:00 A |  | 100% |  |  |
| 49 | 1.3 | **CAPSTONE Project** | 0.75d | 2023-03-21 11:00 | 2023-03-22 09:00 | 28 |  | 0d |  |
| 50 |  | Plan the project | 6h | 2023-03-21 11:00 | 2023-03-22 09:00 |  |  | 0d |  |
| 51 |  | write up the details | 4h | 2023-03-21 11:00 | 2023-03-21 16:00 |  |  | 0.25d |  |
| 52 |  | photo/video progress | 0.5d | 2023-03-21 11:00 | 2023-03-21 16:00 |  |  | 0.25d |  |

## Version 2 (saved 2023-03-23, file Midterm #2v3.mpp)

Note of the change: adding Project file

Last finish 2023-03-22 → 2023-04-04 (+13d).

Added:

| ID | Task | Duration | Start | Finish | Constraint |
| --- | --- | --- | --- | --- | --- |
| 49 | Capstone project ramp-up | 9d? | 2023-03-22 08:00 | 2023-04-03 17:00 | finish no earlier than 2023-04-03 17:00 |

Changed:

| ID | Task | Start | Finish | Duration | Complete | Predecessors |
| --- | --- | --- | --- | --- | --- | --- |
| 1 | **IoT Projects for cohort #9** |  | 2023-03-22 09:00 → 2023-04-04 15:00 (+13d) | 12.12d → 21.75d? | 80% → 39% |  |
| 51 | **CAPSTONE Project** | 2023-03-21 11:00 → 2023-04-04 08:00 (+14d) | 2023-03-22 09:00 → 2023-04-04 15:00 (+13d) |  |  | 28 → 49 |
| 52 | Plan the project | 2023-03-21 11:00 → 2023-04-04 08:00 (+14d) | 2023-03-22 09:00 → 2023-04-04 15:00 (+13d) |  |  |  |
| 53 | write up the details | 2023-03-21 11:00 → 2023-04-04 08:00 (+14d) | 2023-03-21 16:00 → 2023-04-04 12:00 (+14d) |  |  |  |
| 54 | photo/video progress | 2023-03-21 11:00 → 2023-04-04 08:00 (+14d) | 2023-03-21 16:00 → 2023-04-04 12:00 (+14d) |  |  |  |

## Version 3 (saved 2023-04-02, file Midterm#2v4.mpp)

Note of the change: consolidate

Last finish 2023-04-04 → 2023-04-21 (+17d).

Added:

| ID | Task | Duration | Start | Finish | Predecessors | Constraint | Resources |
| --- | --- | --- | --- | --- | --- | --- | --- |
| 27 | complete first midterm | 1min | 2023-03-06 14:00 | 2023-03-06 14:01 | 26 |  |  |
| 48 | complete second midterm | 1min | 2023-03-21 11:00 | 2023-03-21 11:01 | 44 |  | Vernon Cox |
| 55 | **visio the thought** | 0.25d | 2023-04-04 15:00 | 2023-04-04 17:00 | 52 |  | Vernon Cox |
| 56 | modify code | 2h | 2023-04-04 15:00 | 2023-04-04 17:00 | 52 |  | Vernon Cox |
| 57 | fritz | 2h | 2023-04-04 15:00 | 2023-04-04 17:00 | 52 |  | Vernon Cox |
| 59 | complete capstone | 1min | 2023-04-05 15:00 | 2023-04-05 15:01 | 51 | finish no later than 2023-04-19 17:00 | Vernon Cox |
| 60 | complete IoT and Rapid Prototyping course | 1min | 2023-04-21 16:59 | 2023-04-21 17:00 | 59, 51 | finish no earlier than 2023-04-21 17:00 | Vernon Cox |

Changed:

| ID | Task | Start | Finish | Duration | Complete | Total float | Predecessors | Other |
| --- | --- | --- | --- | --- | --- | --- | --- | --- |
| 1 | **IoT Projects for cohort #9** |  | 2023-04-04 15:00 → 2023-04-21 17:00 (+17d) | 21.75d? → 35d? | 39% → 38% |  |  | baseline start none → 2023-03-06 08:00; baseline finish none → 2023-04-04 17:00 |
| 2 | **Midterm Project #1** |  | 2023-03-09 11:30 A → 2023-03-09 11:30 |  | 100% → 99% | none → 0d |  | baseline start none → 2023-03-06 08:00; baseline finish none → 2023-03-09 11:30 |
| 3 | **Plan the project** |  |  |  |  |  |  | baseline start none → 2023-03-06 08:00; baseline finish none → 2023-03-06 13:30 |
| 4 | write up the details |  |  |  |  |  |  | baseline start none → 2023-03-06 08:00; baseline finish none → 2023-03-06 12:00 |
| 5 | photo/video progress |  |  |  |  |  |  | baseline start none → 2023-03-06 13:00; baseline finish none → 2023-03-06 13:30 |
| 6 | **Draw the schematic** |  |  |  |  |  |  | baseline start none → 2023-03-06 13:30; baseline finish none → 2023-03-07 09:00 |
| 7 | pencil in the schematic in notebook or paper |  |  |  |  |  |  | baseline start none → 2023-03-06 13:30; baseline finish none → 2023-03-07 08:30 |
| 8 | photo/video progress |  |  |  |  |  |  | baseline start none → 2023-03-07 08:30; baseline finish none → 2023-03-07 09:00 |
| 9 | **set up new computer** |  |  |  |  |  |  | baseline start none → 2023-03-07 09:00; baseline finish none → 2023-03-07 12:00 |
| 10 | load software |  |  |  |  |  |  | baseline start none → 2023-03-07 09:00; baseline finish none → 2023-03-07 12:00 |
| 11 | **Fritz** |  |  |  |  |  |  | baseline start none → 2023-03-07 13:00; baseline finish none → 2023-03-07 14:00 |
| 12 | photo/video progress |  |  |  |  |  |  | baseline start none → 2023-03-07 13:00; baseline finish none → 2023-03-07 13:30 |
| 13 | draw wiring using Fritz |  |  |  |  |  |  | baseline start none → 2023-03-07 13:30; baseline finish none → 2023-03-07 14:00 |
| 14 | **Code** |  |  |  |  |  |  | baseline start none → 2023-03-07 09:00; baseline finish none → 2023-03-09 11:30 |
| 15 | photo/video progress |  |  |  |  |  |  | baseline start none → 2023-03-07 14:00; baseline finish none → 2023-03-07 14:30 |
| 16 | find code for (new and old) units |  |  |  |  |  |  | baseline start none → 2023-03-07 09:00; baseline finish none → 2023-03-08 11:00 |
| 17 | Auto and Manual - user controls lights and outlet |  |  |  |  |  | 16, 13 → 16 | baseline start none → 2023-03-09 10:30; baseline finish none → 2023-03-09 11:30 |
| 18 | modify code for my use |  |  |  |  |  |  | baseline start none → 2023-03-07 09:30; baseline finish none → 2023-03-07 10:30 |
| 19 | control 2 WEMO outlets |  |  |  |  |  |  | baseline start none → 2023-03-08 08:00; baseline finish none → 2023-03-08 09:00 |
| 20 | update code to control 2 WEMO outlets |  |  |  |  |  |  | baseline start none → 2023-03-08 08:00; baseline finish none → 2023-03-08 09:00 |
| 21 | control Hue lights |  |  |  |  |  |  | baseline start none → 2023-03-08 08:00; baseline finish none → 2023-03-08 09:00 |
| 22 | update codefor hue lights |  |  |  |  |  |  | baseline start none → 2023-03-08 08:00; baseline finish none → 2023-03-08 09:15 |
| 23 | **build the Welcome Box** |  |  |  |  |  |  | baseline start none → 2023-03-06 13:30; baseline finish none → 2023-03-09 09:00 |
| 24 | 3D design and print at least one part (button cover, knob, logo, etc.) |  |  |  |  |  |  | baseline start none → 2023-03-09 08:00; baseline finish none → 2023-03-09 09:00 |
| 25 | A component made at FUSE - laser, wood, metal (case, stand, etc.) |  |  |  |  |  | 24 → none | baseline start none → 2023-03-09 08:00; baseline finish none → 2023-03-09 09:00 |
| 26 | photo/video progress |  |  |  |  |  | 25 → none | baseline start none → 2023-03-06 13:30; baseline finish none → 2023-03-06 14:00 |
| 28 | **Midterm #2v1** |  |  |  |  |  |  | baseline start none → 2023-03-17 08:00; baseline finish none → 2023-03-21 11:00 |
| 29 | **Plan the project** |  |  |  |  |  |  | baseline start none → 2023-03-17 08:00; baseline finish none → 2023-03-17 12:00 |
| 30 | write up the details |  |  |  |  |  |  | baseline start none → 2023-03-17 08:00; baseline finish none → 2023-03-17 12:00 |
| 31 | photo/video progress |  |  |  |  |  |  | baseline start none → 2023-03-17 08:00; baseline finish none → 2023-03-17 08:30 |
| 32 | **Fritz** |  |  |  |  |  |  | baseline start none → 2023-03-17 08:00; baseline finish none → 2023-03-17 09:00 |
| 33 | photo/video progress |  |  |  |  |  |  | baseline start none → 2023-03-17 08:00; baseline finish none → 2023-03-17 09:00 |
| 34 | draw wiring using Fritz |  |  |  |  |  |  | baseline start none → 2023-03-17 08:00; baseline finish none → 2023-03-17 09:00 |
| 35 | **Code** |  |  |  |  |  |  | baseline start none → 2023-03-17 13:00; baseline finish none → 2023-03-17 17:00 |
| 36 | photo/video progress |  |  |  |  |  |  | baseline start none → 2023-03-17 13:00; baseline finish none → 2023-03-17 13:30 |
| 37 | find code for (new and old) units |  |  |  |  |  |  | baseline start none → 2023-03-17 13:00; baseline finish none → 2023-03-17 15:00 |
| 38 | Integrate the entire system |  |  |  |  |  |  | baseline start none → 2023-03-17 13:00; baseline finish none → 2023-03-17 14:00 |
| 39 | Create a user friendly Adafruit.io dashboard |  |  |  |  |  |  | baseline start none → 2023-03-17 13:00; baseline finish none → 2023-03-17 14:00 |
| 40 | Buy and/or create a structure to hold the plant, pump, and sensors. |  |  |  |  |  |  | baseline start none → 2023-03-17 13:00; baseline finish none → 2023-03-17 13:30 |
| 41 | Integration of SMS/email messaging using Zapier (following slides). |  |  |  |  |  |  | baseline start none → 2023-03-17 13:00; baseline finish none → 2023-03-17 17:00 |
| 42 | Video demo your Plant Watering System |  |  |  |  |  |  | baseline start none → 2023-03-17 13:00; baseline finish none → 2023-03-17 16:00 |
| 43 | update code for watering system |  |  |  |  |  |  | baseline start none → 2023-03-17 13:00; baseline finish none → 2023-03-17 17:00 |
| 44 | **build the Fijian Plant H2O system** |  |  |  |  |  |  | baseline start none → 2023-03-21 08:00; baseline finish none → 2023-03-21 11:00 |
| 45 | place all components in bowl |  |  |  |  |  |  | baseline start none → 2023-03-21 08:00; baseline finish none → 2023-03-21 10:00 |
| 46 | check for plant system operation within bowl |  |  |  |  |  |  | baseline start none → 2023-03-21 08:00; baseline finish none → 2023-03-21 11:00 |
| 47 | photo/video progress |  |  |  |  |  |  | baseline start none → 2023-03-21 08:00; baseline finish none → 2023-03-21 11:00 |
| 49 | Capstone project ramp-up |  |  |  |  | 0d → 11d | none → 48 | resources none → Vernon Cox; baseline start none → 2023-03-22 08:00; baseline finish none → 2023-04-03 17:00 |
| 51 | **CAPSTONE Project** |  | 2023-04-04 15:00 → 2023-04-05 15:00 (+1d) | 0.75d → 1.75d |  | 0d → 10.25d | 49 → 49, 2 | constraint none → finish no later than 2023-04-19 17:00; baseline start none → 2023-04-04 08:00; baseline finish none → 2023-04-04 17:00 |
| 52 | Plan the project |  |  |  |  | 0d → 11d |  | resources none → Vernon Cox; baseline start none → 2023-04-04 08:00; baseline finish none → 2023-04-04 15:00 |
| 53 | write up the details/begin the visio | 2023-04-04 08:00 → 2023-04-04 15:00 | 2023-04-04 12:00 → 2023-04-05 10:00 (+1d) |  |  | 0.25d → 10.25d | none → 52 | was named write up the details; resources none → Vernon Cox; baseline start none → 2023-04-04 08:00; baseline finish none → 2023-04-04 12:00 |
| 54 | photo/video progress | 2023-04-04 08:00 → 2023-04-05 10:00 (+1d) | 2023-04-04 12:00 → 2023-04-05 15:00 (+1d) |  |  | 0.25d → 10.25d | none → 53 | resources none → Vernon Cox; baseline start none → 2023-04-04 08:00; baseline finish none → 2023-04-04 12:00 |

## Version 4 (saved 2023-04-10, file Midterm#2v4.mpp)

Note of the change: visio and fritz and coding update apr12v3

Last finish stays 2023-04-21. Complete tasks 33 → 34.

Added:

| ID | Task | Duration | Start | Finish | Predecessors | Constraint | Resources |
| --- | --- | --- | --- | --- | --- | --- | --- |
| 53 | develop work breakdown schedule | 3h | 2023-04-05 08:00 A | 2023-04-10 17:00 A |  | finish no earlier than 2023-04-10 17:00 | Vernon Cox |
| 57 | check for maker-space availabiltiy to make holding box | 2h | 2023-04-10 08:00 | 2023-04-10 10:00 |  | start no earlier than 2023-04-10 08:00 | Vernon Cox |
| 59 | develop the process that grabs the MAC addres via bluetooth | 14h | 2023-04-07 08:00 A | 2023-04-10 15:00 |  | start no earlier than 2023-04-07 08:00 | Vernon Cox |
| 60 | test this iteration | 3h | 2023-04-10 15:00 A | 2023-04-11 09:00 | 59 |  | Vernon Cox |
| 61 | develop the process that incorporates the trust quotient into the sequence | 16h | 2023-04-11 08:00 | 2023-04-12 17:00 |  | start no earlier than 2023-04-11 08:00 | Vernon Cox |
| 62 | test this iteration | 3h | 2023-04-13 08:00 | 2023-04-13 11:00 | 61 |  | Vernon Cox |
| 63 | review progress by Brian and/or EJ | 0.5h | 2023-04-13 11:00 A | 2023-04-13 11:30 | 62 |  | Vernon Cox |
| 64 | update work breakdown schedule | 2h | 2023-04-13 11:30 | 2023-04-13 14:30 | 63 |  | Vernon Cox |
| 66 | photo/video progress | 1h | 2023-04-12 10:00 | 2023-04-12 11:00 | 65 |  | Vernon Cox |
| 67 | make a box to hold electronics | 4h | 2023-04-14 08:00 | 2023-04-14 12:00 |  | start no earlier than 2023-04-14 08:00 | Vernon Cox |
| 68 | photo/video progress | 1h | 2023-04-14 13:00 | 2023-04-14 14:00 | 67 |  | Vernon Cox |
| 69 | review progress by Brian and/or EJ | 0.5h | 2023-04-14 14:00 | 2023-04-14 14:30 | 68 |  | Vernon Cox |
| 70 | test this iteration | 2h | 2023-04-14 14:30 | 2023-04-14 16:30 | 69 |  | Vernon Cox |
| 71 | update work breakdown schedule | 2h | 2023-04-14 16:30 | 2023-04-17 09:30 | 70 |  | Vernon Cox |
| 73 | present project to instructors, employers, guest | 1h | 2023-04-21 08:00 | 2023-04-21 09:00 |  | start no earlier than 2023-04-21 08:00 | Vernon Cox |
| 75 | receive certificate | 1h | 2023-04-21 09:00 | 2023-04-21 10:00 |  |  | Vernon Cox |

Changed:

| ID | Task | Start | Finish | Duration | Complete | Total float | Predecessors | Other |
| --- | --- | --- | --- | --- | --- | --- | --- | --- |
| 1 | **IoT Projects for cohort #9** |  | 2023-04-21 17:00 → 2023-04-21 10:00 | 35d? → 34.25d? | 38% → 30% |  |  |  |
| 51 | **CAPSTONE Project** | 2023-04-04 08:00 A | 2023-04-05 15:00 → 2023-04-21 10:00 (+16d) | 1.75d → 13.25d | 0% → 21% | 10.25d → 0d |  | constraint finish no later than 2023-04-19 17:00 → none |
| 52 | Plan the bluetooth/MAC finder project | 2023-04-04 08:00 A | 2023-04-04 15:00 → 2023-04-11 17:00 (+7d) | 6h → 48h | 0% → 25% | 11d → 5.75d |  | was named Plan the project; constraint none → start no earlier than 2023-04-04 08:00 |
| 54 | write up the details/begin the visio | 2023-04-04 15:00 → 2023-04-04 08:00 A | 2023-04-05 10:00 → 2023-04-11 17:00 (+6d) | 4h → 48h | 0% → 25% | 10.25d → 6.75d | 52 → none | constraint none → finish no earlier than 2023-04-11 17:00 |
| 55 | photo/video progress | 2023-04-05 10:00 → 2023-04-12 08:00 (+7d) | 2023-04-05 15:00 → 2023-04-12 12:00 (+7d) |  |  | 10.25d → 5.5d |  |  |
| 56 | visio the thought | 2023-04-04 15:00 → 2023-04-12 08:00 A (+8d) | 2023-04-04 17:00 → 2023-04-13 17:00 (+9d) | 0.25d → 2d | 0% → 25% | 11d → 5.25d |  |  |
| 58 | **modify code** | 2023-04-04 15:00 → 2023-04-07 08:00 A (+3d) | 2023-04-04 17:00 → 2023-04-13 11:30 (+9d) | 2h → 4.44d | 0% → 15% | 11d → 5.81d | 52 → none |  |
| 65 | fritz | 2023-04-04 15:00 → 2023-04-12 08:00 (+8d) | 2023-04-04 17:00 → 2023-04-12 10:00 (+8d) |  |  | 11d → 5.62d |  |  |
| 72 | **complete capstone** | 2023-04-05 15:00 → 2023-04-21 08:00 (+16d) | 2023-04-05 15:01 → 2023-04-21 09:00 (+16d) | 1min → 0.12d |  | 10.25d → 0d | 51 → none | constraint finish no later than 2023-04-19 17:00 → none |
| 74 | **complete IoT and Rapid Prototyping course** | 2023-04-21 16:59 → 2023-04-21 09:00 | 2023-04-21 17:00 → 2023-04-21 10:00 | 1min → 0.12d |  |  | 72, 51 → 73 | constraint finish no earlier than 2023-04-21 17:00 → none |

## Version 5 (saved 2023-04-12, file Midterm#2v5.mpp)

Note of the change: updating capstone

Last finish stays 2023-04-21.

Added:

| ID | Task | Duration | Start | Finish | Predecessors |
| --- | --- | --- | --- | --- | --- |
| 60 | develop the process that gets the GPU location of LoRaB unit by the LoRaH unit | 20h | 2023-04-12 15:00 | 2023-04-17 10:00 | 59 |

Removed: 61 develop the process that incorporates the trust quotient into the sequence; 62 test this iteration

Changed:

| ID | Task | Start | Finish | Duration | Complete | Total float | Predecessors | Other |
| --- | --- | --- | --- | --- | --- | --- | --- | --- |
| 1 | **IoT Projects for cohort #9** |  |  |  | 30% → 31% |  |  |  |
| 51 | **CAPSTONE Project** |  |  |  | 21% → 22% |  |  |  |
| 52 | Plan the BusDirector project |  |  |  |  |  |  | was named Plan the bluetooth/MAC finder project |
| 58 | **modify code** | 2023-04-07 08:00 A → 2023-04-10 15:00 A (+3d) | 2023-04-13 11:30 → 2023-04-17 13:06 (+4d) | 4.44d → 4.76d | 15% → 14% | 5.81d → 3.74d |  |  |
| 59 | develop the process that post the GPU location of LoRaB unit | 2023-04-07 08:00 A → 2023-04-11 08:00 A (+4d) | 2023-04-10 15:00 → 2023-04-12 15:00 (+2d) |  |  | 8.24d → 3.74d |  | was named develop the process that grabs the MAC addres via bluetooth |
| 61 | test this iteration |  | 2023-04-11 09:00 → 2023-04-17 13:06 (+6d) |  |  | 8.12d → 3.74d | 59 → 60 |  |
| 62 | review progress by Brian and/or EJ |  |  |  |  |  | test this iteration → none |  |
| 64 | fritz | 2023-04-12 08:00 A |  |  | 0% → 95% | 5.62d → 6.88d |  |  |

## Version 6 (saved 2023-04-19, file CapStnWBSBusAlerterv7.mpp)

Note of the change: updating capstone

Last finish stays 2023-04-21. Complete tasks 34 → 52.

Changed:

| ID | Task | Start | Finish | Complete | Total float | Other |
| --- | --- | --- | --- | --- | --- | --- |
| 1 | **IoT Projects for cohort #9** |  |  | 31% → 52% |  |  |
| 48 | complete second midterm | 2023-03-21 11:00 A | 2023-03-21 11:01 A | 0% → 100% | 11.62d → none |  |
| 51 | **CAPSTONE Project** |  |  | 22% → 59% |  |  |
| 52 | Plan the BusAlerter project |  |  |  | 5.75d → 7.25d | was named Plan the BusDirector project |
| 55 | photo/video progress | 2023-04-12 08:00 A | 2023-04-12 12:00 A | 0% → 100% | 5.5d → none |  |
| 56 | visio the thought |  | 2023-04-13 17:00 A | 25% → 100% | 5.25d → none |  |
| 57 | check for maker-space availabiltiy to make holding box | 2023-04-10 08:00 A | 2023-04-10 10:00 A | 0% → 100% | 9d → none |  |
| 58 | **modify code** |  | 2023-04-17 13:06 A | 14% → 100% | 3.74d → none |  |
| 59 | develop the process that post the GPU location of LoRaB unit |  | 2023-04-12 15:00 A | 30% → 100% | 3.74d → none |  |
| 60 | develop the process that gets the GPU location of LoRaB unit by the LoRaH unit | 2023-04-12 15:00 A | 2023-04-17 10:00 A | 0% → 100% | 3.74d → none |  |
| 61 | test this iteration |  | 2023-04-17 13:06 A | 30% → 100% | 3.74d → none |  |
| 62 | review progress by Brian and/or EJ |  | 2023-04-13 11:30 A | 50% → 100% | 5.56d → none |  |
| 63 | update work breakdown schedule | 2023-04-13 11:30 A | 2023-04-13 14:30 A | 0% → 100% | 5.56d → none |  |
| 64 | fritz |  | 2023-04-12 10:00 A | 95% → 100% | 6.88d → none |  |
| 65 | photo/video progress | 2023-04-12 10:00 A | 2023-04-12 11:00 A | 0% → 100% | 6.88d → none |  |
| 66 | make a box to hold electronics | 2023-04-14 08:00 A | 2023-04-14 12:00 A | 0% → 100% | 4.06d → none |  |
| 67 | photo/video progress | 2023-04-14 13:00 A | 2023-04-14 14:00 A | 0% → 100% | 4.06d → none |  |
| 68 | review progress by Brian and/or EJ | 2023-04-14 14:00 A | 2023-04-14 14:30 A | 0% → 100% | 4.06d → none |  |
| 69 | test this iteration | 2023-04-14 14:30 A | 2023-04-14 16:30 A | 0% → 100% | 4.06d → none |  |
| 70 | update work breakdown schedule | 2023-04-14 16:30 A | 2023-04-17 09:30 A | 0% → 100% | 4.06d → none |  |
| 71 | **complete capstone** | 2023-04-21 08:00 A | 2023-04-21 09:00 A | 0% → 100% | 0d → none |  |
| 72 | present project to instructors, employers, guest | 2023-04-21 08:00 A | 2023-04-21 09:00 A | 0% → 100% | 0d → none |  |
| 73 | **complete IoT and Rapid Prototyping course** | 2023-04-21 09:00 A | 2023-04-21 10:00 A | 0% → 100% | 0d → none |  |
| 74 | receive certificate | 2023-04-21 09:00 A | 2023-04-21 10:00 A | 0% → 100% | 0d → none |  |
